# 标准规范

Schedule from a web Gantt chart, 2024-04-01 to 2025-05-15.
Saturdays and Sundays are off

## Schedule

| ID | WBS | Task | Duration | Start | Finish | Complete | inPeople | Status |
| --- | --- | --- | --- | --- | --- | --- | --- | --- |
| 2 | 1 | **《城市安全风险综合监测预警平台数据接入规范团标》** | 121d | 2024-04-01 | 2024-09-16 | 42% |  |  |
| 3 | 1.1 | 第一部分：城市生命线工程（桥梁） | 66d | 2024-04-01 | 2024-07-01 | 80% | 陈文刚、周仁成 |  |
| 4 | 1.2 | 第二部分：公共安全（电梯） | 68d | 2024-06-13 | 2024-09-16 | 30% | 何昱澄 |  |
| 5 | 1.3 | 第三部分：生产安全（危化品） | 68d | 2024-06-13 | 2024-09-16 | 30% | 刘树极 |  |
| 6 | 1.4 | 第四部分：自然灾害（内涝） | 68d | 2024-06-13 | 2024-09-16 | 30% | 王菁荣、汤仰腾 |  |
| 7 | 2 | **《应急管理森防烟火识别报警数据技术规范》** | 157d | 2024-05-27 | 2024-12-31 | 11% | 周仁成、梁文杰（汤仰腾） |  |
| 8 | 2.1 | 初稿编制 | 25d | 2024-05-27 | 2024-06-28 | 70% |  |  |
| 9 | 2.2 | 组内评审（给出优化建议） | 11d | 2024-07-01 | 2024-07-15 |  |  | waiting |
| 10 | 2.3 | 修改初稿 | 11d | 2024-07-16 | 2024-07-30 |  |  | waiting |
| 11 | 2.4 | 应急局挂网公示 | 34d | 2024-07-31 | 2024-09-16 |  |  | waiting |
| 12 | 2.5 | 市监局挂网征求意见 | 45d | 2024-09-16 | 2024-11-15 |  |  | waiting |
| 13 | 2.6 | 专家评审 | 12d | 2024-11-15 | 2024-12-02 |  |  | waiting |
| 14 | 2.7 | 报送标准委 | 22d | 2024-12-02 | 2024-12-31 |  |  | waiting |
| 15 | 3 | **《应急通信市、区联动技术规范》** | 241d | 2024-06-13 | 2025-05-15 | 2% | 闫小涛、周仁成（汤仰腾） |  |
| 16 | 3.1 | 初稿编制 | 42d | 2024-06-13 | 2024-08-09 | 10% |  |  |
| 17 | 3.2 | 组内评审（给出优化意见） | 16d | 2024-08-26 | 2024-09-16 |  |  | waiting |
| 18 | 3.3 | 修改初稿 | 22d | 2024-09-16 | 2024-10-15 |  |  | waiting |
| 19 | 3.4 | 应急局挂网公示 | 34d | 2024-10-16 | 2024-12-02 |  |  | waiting |
| 20 | 3.5 | 市监局挂网征求意见 | 38d | 2024-12-02 | 2025-01-22 |  |  | waiting |
| 21 | 3.6 | 专家评审 | 30d | 2025-01-23 | 2025-03-05 |  |  | waiting |
| 22 | 3.7 | 报送标委会 | 51d | 2025-03-06 | 2025-05-15 |  |  | waiting |
| 23 | 4 | **《应急管理城市生命线工程数据规范》** | 136d | 2024-06-25 | 2024-12-31 |  | 陈文刚、周仁成 | waiting |
| 24 | 4.1 | 初稿编制 | 15d | 2024-06-25 | 2024-07-15 |  |  | waiting |
| 25 | 4.2 | 组内评审（给出优化意见） | 10d | 2024-07-16 | 2024-07-29 |  |  | waiting |
| 26 | 4.3 | 修改初稿 | 15d | 2024-07-30 | 2024-08-19 |  |  | waiting |
| 27 | 4.4 | 应急局挂网公示 | 30d | 2024-08-20 | 2024-09-30 |  |  | waiting |
| 28 | 4.5 | 市监局挂网征求意见 | 24d | 2024-10-01 | 2024-11-01 |  |  | waiting |
| 29 | 4.6 | 专家评审 | 20d | 2024-11-04 | 2024-11-29 |  |  | waiting |
| 30 | 4.7 | 报送标委会 | 22d | 2024-12-02 | 2024-12-31 |  |  | waiting |

Notes:
- 4: 需等第一部分合稿
- 5: 需等第一部分合稿
- 6: 需等第一部分合稿
- 9: 找局里专家给意见
